# Implementation Services UK V1

Schedule from MS Project, 2019-01-14 to 2019-03-29, status date 2018-09-03.

## Calendars

- Standard: Mon-Fri 08:00-12:00, 13:00-17:00; Sat-Sun off.

## Schedule

| ID | WBS | Task | Duration | Start | Finish | Predecessors | Total slack |
| --- | --- | --- | --- | --- | --- | --- | --- |
| 1 | 1 | **CPQ Services BP Implementation for UK** | 48d | 2019-01-14 | 2019-03-20 |  | 0d |
| 2 | 1.1 | **Project Preparation** | 1d | 2019-01-14 | 2019-01-14 |  | 0d |
| 3 | 1.1.1 | Set-Up Project Org (Stakeholders R&R) | 1d | 2019-01-14 | 2019-01-14 |  | 54d |
| 4 | 1.1.2 | Create Project Charter | 1d | 2019-01-14 | 2019-01-14 |  | 54d |
| 5 | 1.1.3 | Finalize Roles & Responsibilities | 1d | 2019-01-14 | 2019-01-14 |  | 0d |
| 6 | 1.2 | **Discovery & Design (At Chubb UK Office)** | 17d | 2019-01-15 | 2019-02-06 |  | 0d |
| 7 | 1.2.1 | Team Introduction & Key Value Driver | 0.25d | 2019-01-15 | 2019-01-15 | 5 | 0d |
| 8 | 1.2.2 | Business Scenario Overview | 0.25d | 2019-01-15 | 2019-01-15 | 7 | 0d |
| 9 | 1.2.3 | Current Process & pain areas | 0.5d | 2019-01-15 | 2019-01-15 | 8 | 0d |
| 10 | 1.2.4 | Future ideal Std Process | 0.5d | 2019-01-16 | 2019-01-16 | 9 | 0d |
| 11 | 1.2.5 | Master Pricing & Data / Integration reqmts | 0.5d | 2019-01-16 | 2019-01-16 | 10 | 0d |
| 12 | 1.2.6 | Solution Technical Architecture | 4d | 2019-01-17 | 2019-01-22 | 11 | 0d |
| 13 | 1.2.7 | Data Management Strategy | 1d | 2019-01-23 | 2019-01-23 | 12 | 0d |
| 14 | 1.2.8 | Finalize Project Phase and Timelines | 2d | 2019-01-24 | 2019-01-25 | 13 | 0d |
| 15 | 1.2.9 | Stage Gate Process 1 | 1d | 2019-01-28 | 2019-01-28 | 14 | 0d |
| 16 | 1.2.10 | **Deliverables & Sign-offs** | 7d | 2019-01-29 | 2019-02-06 |  | 0d |
| 17 | 1.2.10.1 | Solution design Arch doc | 1d | 2019-01-29 | 2019-01-29 | 15 | 0d |
| 18 | 1.2.10.2 | Business Process L1 standardized Process | 0.5d | 2019-01-30 | 2019-01-30 | 17 | 0d |
| 19 | 1.2.10.3 | Fit-Gap Analysis | 0.5d | 2019-01-30 | 2019-01-30 | 18 | 0d |
| 20 | 1.2.10.4 | Infra Sizing & Integration Strategy | 1d | 2019-01-31 | 2019-01-31 | 19 | 41d |
| 21 | 1.2.10.5 | Sample Data Upload | 1d | 2019-01-31 | 2019-01-31 | 19 | 0d |
| 22 | 1.2.10.6 | Testing & Issue Resolution | 2d | 2019-02-01 | 2019-02-04 | 21 | 0d |
| 23 | 1.2.10.7 | Sign-Off on all Deliverables | 1d | 2019-02-05 | 2019-02-05 | 22 | 0d |
| 24 | 1.2.10.8 | Stage Gate Process 2 | 1d | 2019-02-06 | 2019-02-06 | 23 | 0d |

| ID | WBS | Task | Duration | Start | Finish | Predecessors | Total slack |
| --- | --- | --- | --- | --- | --- | --- | --- |
| 25 | 1.3 | **Realization** | 30d | 2019-02-07 | 2019-03-20 |  | 0d |
| 26 | 1.3.1 | EAI - Integration to CRM | 15d | 2019-02-07 | 2019-02-27 | 24 | 22d |
| 27 | 1.3.2 | Pricing & Product Data Loads | 15d | 2019-02-07 | 2019-02-27 | 24 | 22d |
| 28 | 1.3.3 | Test Plan & Test Case Preparation | 20d | 2019-02-07 | 2019-03-06 | 24 | 17d |
| 29 | 1.3.4 | **Sprint 1** | 10d | 2019-02-07 | 2019-02-20 |  | 0d |
| 30 | 1.3.4.1 | Install CPQ | 1d | 2019-02-07 | 2019-02-07 | 24 | 0d |
| 31 | 1.3.4.2 | Access & User Setup | 1d | 2019-02-08 | 2019-02-08 | 30 | 0d |
| 32 | 1.3.4.3 | Design Product Structure | 2d | 2019-02-11 | 2019-02-12 | 31 | 0d |
| 33 | 1.3.4.4 | Product Family & Grouping | 2d | 2019-02-13 | 2019-02-14 | 32 | 0d |
| 34 | 1.3.4.5 | Integration – Products/ Price Lists | 2d | 2019-02-15 | 2019-02-18 | 33 | 0d |
| 35 | 1.3.4.6 | Testing & Sprint Demo | 2d | 2019-02-19 | 2019-02-20 | 34 | 0d |
| 36 | 1.3.5 | **Sprint 2** | 10d | 2019-02-21 | 2019-03-06 |  | 0d |
| 37 | 1.3.5.1 | CPQ Product configuration (Edit/Clone/Amend) | 2d | 2019-02-21 | 2019-02-22 | 35 | 0d |
| 38 | 1.3.5.2 | Quote Design / Proposal Template | 2d | 2019-02-25 | 2019-02-26 | 37 | 0d |
| 39 | 1.3.5.3 | Pricing Design (Integration) | 2d | 2019-02-27 | 2019-02-28 | 38 | 0d |
| 40 | 1.3.5.4 | Subscription Pricing % Discount | 1d | 2019-03-01 | 2019-03-01 | 39 | 0d |
| 41 | 1.3.5.5 | DOA Workflow Automated Rules | 2d | 2019-03-04 | 2019-03-05 | 40 | 0d |
| 42 | 1.3.5.6 | Testing & Sprint Demo | 1d | 2019-03-06 | 2019-03-06 | 41 | 0d |
| 43 | 1.3.6 | **Testing & UAT** | 8d | 2019-03-07 | 2019-03-18 |  | 0d |
| 44 | 1.3.6.1 | **Testing** | 5d | 2019-03-07 | 2019-03-13 |  | 0d |
| 45 | 1.3.6.1.1 | Systems Testing | 2d | 2019-03-07 | 2019-03-08 | 42 | 0d |
| 46 | 1.3.6.1.2 | Test Results Validation | 3d | 2019-03-11 | 2019-03-13 | 45 | 0d |
| 47 | 1.3.6.2 | **UAT** | 3d | 2019-03-14 | 2019-03-18 |  | 0d |
| 48 | 1.3.6.2.1 | UAT Support | 2d | 2019-03-14 | 2019-03-15 | 46 | 0d |
| 49 | 1.3.6.2.2 | User Acceptance | 1d | 2019-03-18 | 2019-03-18 | 48 | 0d |

| ID | WBS | Task | Duration | Start | Finish | Predecessors | Total slack |
| --- | --- | --- | --- | --- | --- | --- | --- |
| 50 | 1.3.7 | **Go-Live** | 2d | 2019-03-19 | 2019-03-20 |  | 0d |
| 51 | 1.3.7.1 | Configure Package Settings | 0.5d | 2019-03-19 | 2019-03-19 | 49 | 0d |
| 52 | 1.3.7.2 | Pre-Deployment Checks & Deploy | 0.5d | 2019-03-19 | 2019-03-19 | 51 | 0d |
| 53 | 1.3.7.3 | Production Data Migration & Sanity Check | 0.5d | 2019-03-20 | 2019-03-20 | 52 | 0d |
| 54 | 1.3.7.4 | Go Live | 0.5d | 2019-03-20 | 2019-03-20 | 53 | 0d |
| 55 | 2 | **Transition & Hypercare** | 7d | 2019-03-21 | 2019-03-29 |  | 0d |
| 56 | 2.1 | Post-Go Live Support | 5d | 2019-03-21 | 2019-03-27 | 54 | 0d |
| 57 | 2.2 | Transitionto support | 2d | 2019-03-28 | 2019-03-29 | 56 | 0d |
